How a schedule from an exported table changed from version to version. A marks actual dates.

## Version 1 (saved 2025-11-08)

Note of the change: docs: reorganize communication and project schedule documentation

| ID | Task | Start | Finish |
| --- | --- | --- | --- |
| 1 | PROJECT KICKOFF | 2025-10-17 | 2025-10-20 |
| 2 | PHASE 1: FOUNDATION & INFRASTRUCTURE | 2025-10-20 | 2025-11-08 |
| 2.1 | User Authentication System | 2025-10-20 | 2025-10-22 |
| 2.2 | Database Setup & Security | 2025-10-22 | 2025-10-23 |
| 2.3 | API Security & Middleware | 2025-10-24 | 2025-10-25 |
| 2.4 | Core Agent Framework | 2025-10-25 | 2025-10-26 |
| 2.5 | Phase 1 Testing & Validation | 2025-10-26 | 2025-10-26 |
| 2.6 | Database Schema Migration | 2025-11-01 | 2025-11-08 |
| 2.6.1 | 9 Database Migrations | 2025-11-01 | 2025-11-08 |
| 2.6.2 | 24 RLS Policies | 2025-11-05 | 2025-11-08 |
| 2.6.3 | Database Field Migration | 2025-11-06 | 2025-11-08 |
| 3 | PHASE 1 MILESTONE: SECURE FOUNDATION COMPLETE | 2025-11-08 | 2025-11-08 |
| 4 | PHASE 2: AI AGENTS & INTEGRATIONS | 2025-10-27 | 2025-11-15 |
| 4.1 | MCP Base Server Infrastructure | 2025-10-27 | 2025-10-27 |
| 4.1.1 | Avinode MCP Server | 2025-10-27 | 2025-10-28 |
| 4.1.2 | Gmail MCP Server | 2025-10-28 | 2025-10-28 |
| 4.1.3 | Google Sheets MCP Server | 2025-10-28 | 2025-10-29 |
| 4.1.4 | Supabase MCP Server | 2025-10-29 | 2025-10-29 |
| 4.2 | RFP Orchestrator Agent | 2025-10-30 | 2025-11-05 |
| 4.3 | Client Data Manager Agent | 2025-10-31 | 2025-11-06 |
| 4.4 | Flight Search Agent | 2025-11-01 | 2025-11-07 |
| 4.5 | Proposal Analysis Agent | 2025-11-02 | 2025-11-08 |
| 4.6 | Communication Manager Agent | 2025-11-03 | 2025-11-08 |
| 4.7 | Error Monitor Agent | 2025-11-04 | 2025-11-08 |
| 4.8 | Agent Coordination Layer | 2025-11-05 | 2025-11-08 |
| 4.9 | Test Infrastructure Setup | 2025-11-02 | 2025-11-08 |
| 4.10 | Phase 2 Integration Testing | 2025-11-09 | 2025-11-15 |
| 5 | PHASE 2 MILESTONE: CORE AI AGENTS OPERATIONAL | 2025-11-15 | 2025-11-15 |
| 6 | PHASE 3: ADVANCED WORKFLOW & AUTOMATION | 2025-11-03 | 2025-11-22 |
| 6.1 | Workflow Orchestration System | 2025-11-06 | 2025-11-08 |
| 6.2 | Background Job Processing | 2025-11-07 | 2025-11-08 |
| 6.3 | Message Bus Implementation | 2025-11-05 | 2025-11-08 |
| 6.4 | Handoff Manager | 2025-11-06 | 2025-11-08 |
| 6.5 | Chat Agent Service | 2025-11-08 | 2025-11-15 |
| 6.6 | End-to-End Workflow Testing | 2025-11-16 | 2025-11-22 |
| 7 | PHASE 3 MILESTONE: COMPLETE AI SYSTEM LIVE | 2025-11-22 | 2025-11-22 |
| 8 | PHASE 4: USER INTERFACE & EXPERIENCE | 2025-11-10 | 2025-11-23 |
| 8.1 | Authenticated User Interface | 2025-10-20 | 2025-10-25 |
| 8.2 | Real-time Status Updates | 2025-10-26 | 2025-11-01 |
| 8.3 | Request Submission Workflow | 2025-11-02 | 2025-11-05 |
| 8.4 | Quote Review & Comparison UI | 2025-11-06 | 2025-11-08 |
| 8.5 | Workflow Visualization | 2025-11-08 | 2025-11-10 |
| 8.6 | UI/UX Polish & Accessibility | 2025-11-11 | 2025-11-15 |
| 8.7 | UI Component Library | 2025-10-25 | 2025-11-08 |
| 8.8 | ChatKit Frontend Integration | 2025-11-08 | 2025-11-08 |
| 8.9 | Quote Review & PDF Generation | 2025-11-16 | 2025-11-23 |
| 8.10 | Frontend Testing Suite | 2025-11-15 | 2025-11-20 |
| 9 | PHASE 4 MILESTONE: USER INTERFACE COMPLETE | 2025-11-23 | 2025-11-23 |
| 10 | PHASE 5: QUALITY ASSURANCE & OPTIMIZATION | 2025-11-24 | 2025-12-07 |
| 10.1 | Comprehensive Test Coverage | 2025-11-09 | 2025-12-07 |
| 10.2 | TypeScript Error Cleanup | 2025-11-09 | 2025-11-16 |
| 10.3 | Test Suite Stabilization | 2025-11-09 | 2025-11-16 |
| 10.4 | Load & Performance Testing | 2025-11-24 | 2025-11-30 |
| 10.5 | API Performance Optimization | 2025-12-01 | 2025-12-03 |
| 10.6 | Database Query Optimization | 2025-12-04 | 2025-12-05 |
| 10.7 | Security Audit & Penetration Testing | 2025-12-06 | 2025-12-06 |
| 10.8 | Bug Fix Sprint | 2025-12-07 | 2025-12-07 |
| 11 | PHASE 5 MILESTONE: PRODUCTION-READY QUALITY | 2025-12-07 | 2025-12-07 |
| 12 | PHASE 6: PRODUCTION DEPLOYMENT PREP | 2025-12-08 | 2025-12-21 |
| 12.1 | Monitoring & Alerting Setup | 2025-11-08 | 2025-11-15 |
| 12.2 | CI/CD Pipeline Configuration | 2025-10-28 | 2025-11-08 |
| 12.3 | Vercel Deployment | 2025-10-25 | 2025-11-01 |
| 12.4 | Supabase Production Setup | 2025-11-01 | 2025-11-08 |
| 12.5 | Staging Environment Deployment | 2025-12-08 | 2025-12-10 |
| 12.6 | User Acceptance Testing (UAT) | 2025-12-11 | 2025-12-14 |
| 12.7 | Production Deployment Preparation | 2025-12-15 | 2025-12-18 |
| 12.8 | Pre-Launch Checklist & Validation | 2025-12-19 | 2025-12-21 |
| 13 | PHASE 6 MILESTONE: READY FOR LAUNCH | 2025-12-21 | 2025-12-21 |
| 14 | PHASE 7: PRODUCTION LAUNCH | 2025-12-22 | 2025-12-28 |
| 14.1 | Production Deployment | 2025-12-22 | 2025-12-22 |

| ID | Task | Start | Finish |
| --- | --- | --- | --- |
| 14.2 | Launch Day Monitoring | 2025-12-22 | 2025-12-22 |
| 14.3 | Early User Onboarding | 2025-12-23 | 2025-12-25 |
| 14.4 | Performance Monitoring & Tuning | 2025-12-23 | 2025-12-28 |
| 14.5 | User Feedback Collection | 2025-12-26 | 2025-12-28 |
| 14.6 | Issue Triage & Hot Fixes | 2025-12-22 | 2025-12-28 |
| 15 | PROJECT MILESTONE: PRODUCTION LAUNCH COMPLETE | 2025-12-28 | 2025-12-28 |
| 16 | POST-LAUNCH SUPPORT & ITERATION | 2025-12-29 | 2026-01-04 |
| 16.1 | Week 1 Performance Review | 2025-12-29 | 2026-01-04 |
| 16.2 | Feature Enhancement Planning | 2025-12-29 | 2026-01-04 |
| 17 | PROJECT COMPLETION & HANDOFF | 2026-01-04 | 2026-01-04 |
| BACKLOG.1 | PR Review & Merge Coordination |  |  |
| BACKLOG.2 | TypeScript Error Resolution |  |  |
| BACKLOG.3 | Test Data Updates |  |  |
| BACKLOG.4 | Chat UI Integration |  |  |
| BACKLOG.5 | MCP Credential Validation |  |  |
| BACKLOG.6 | PR #6 Investigation |  |  |

## Version 2 (saved 2025-12-24)

Note of the change: chore: remove discarded iso_agent_id to user_id migration

Last finish stays 2026-01-04.

Removed: 2.6.3 Database Field Migration
