How a schedule from an exported table changed from version to version. A marks actual dates.

## Version 1 (saved 2025-11-08)

Note of the change: docs: update project status and communication for Nov 8, 2025

| ID | Task | Start | Finish |
| --- | --- | --- | --- |
| 1.0 | PROJECT KICKOFF | 2025-10-20 | 2025-10-20 |
| 2.0 | PHASE 1: FOUNDATION & INFRASTRUCTURE | 2025-10-20 | 2025-11-08 |
| 2.1 | User Authentication System | 2025-10-20 | 2025-10-22 |
| 2.2 | Database Setup & Security | 2025-10-22 | 2025-11-08 |
| 2.3 | API Security & Middleware | 2025-10-24 | 2025-10-25 |
| 2.4 | Core Agent Framework | 2025-10-25 | 2025-10-26 |
| 2.5 | Phase 1 Testing & Validation | 2025-10-26 | 2025-10-26 |
| 2.6 | Database Schema Migration | 2025-11-01 | 2025-11-08 |
| 2.7 | Database Field Migration (iso_agent_id → user_id) | 2025-11-08 | 2025-11-08 |
| 3.0 | PHASE 1 MILESTONE: SECURE FOUNDATION COMPLETE | 2025-11-08 | 2025-11-08 |
| 3.1 | PR Code Review & Maintenance | 2025-11-01 | 2025-11-08 |
| 3.2 | Security Hardening | 2025-11-08 | 2025-11-08 |
| 4.0 | PHASE 2: CONVERSATIONAL RFP WORKFLOW | 2025-11-01 | 2025-11-22 |
| 4.1 | DES-227: Mock Data Infrastructure | 2025-11-01 | 2025-11-06 |
| 4.1.1 | DES-231: Create Aircraft Database | 2025-11-01 | 2025-11-01 |
| 4.1.2 | DES-232: Create Avinode API Response Mocks | 2025-11-04 | 2025-11-05 |
| 4.1.3 | DES-233: Implement Mock/Real API Toggle | 2025-11-06 | 2025-11-06 |
| 4.2 | DES-228: stdio Process Spawning for MCP | 2025-11-07 | 2025-11-11 |
| 4.2.1 | DES-234: Create MCPServerManager Singleton | 2025-11-07 | 2025-11-07 |
| 4.2.2 | DES-235: Implement stdio Transport in API | 2025-11-08 | 2025-11-08 |
| 4.2.3 | DES-236: Add MCP Health Check Endpoint | 2025-11-11 | 2025-11-11 |
| 4.3 | DES-229: GPT-4o Tool Calling with MCP | 2025-11-12 | 2025-11-14 |
| 4.3.1 | DES-237: Implement executeTool() Function | 2025-11-12 | 2025-11-12 |
| 4.3.2 | DES-238: Add Retry Logic and Error Handling | 2025-11-13 | 2025-11-13 |
| 4.3.3 | DES-239: Integrate Tool Execution into Streaming | 2025-11-14 | 2025-11-14 |
| 4.4 | DES-230: Chat Interface Real API Integration | 2025-11-15 | 2025-11-22 |
| 4.4.1 | ChatKit Frontend Component | 2025-11-08 | 2025-11-08 |
| 4.4.2 | UI Component Library | 2025-11-01 | 2025-11-08 |
| 4.4.3 | API Routes Layer Completion | 2025-11-01 | 2025-11-08 |
| 4.4.4 | Chat UI Integration with Streaming APIs | 2025-11-15 | 2025-11-22 |
| 4.5 | PHASE 2 MILESTONE: CONVERSATIONAL RFP COMPLETE | 2025-11-22 | 2025-11-22 |
| 5.0 | PHASE 3: ADVANCED WORKFLOW & AUTOMATION | 2025-11-01 | 2025-11-25 |
| 5.1 | Proposal Analysis Agent | 2025-11-01 | 2025-11-08 |
| 5.2 | Communication Manager Agent | 2025-11-01 | 2025-11-08 |
| 5.3 | Error Monitoring Agent | 2025-11-01 | 2025-11-08 |
| 5.4 | Workflow Orchestration System | 2025-11-01 | 2025-11-08 |
| 5.5 | Background Job Processing | 2025-11-01 | 2025-11-08 |
| 5.6 | End-to-End Workflow Testing | 2025-11-15 | 2025-11-25 |
| 5.7 | TypeScript Error Cleanup | 2025-11-08 | 2025-11-15 |
| 5.8 | Test Suite Stabilization | 2025-11-08 | 2025-11-15 |
| 6.0 | PHASE 3 MILESTONE: COMPLETE AI SYSTEM LIVE | 2025-11-25 | 2025-11-25 |
| 7.0 | PHASE 4: USER INTERFACE & EXPERIENCE | 2025-11-08 | 2025-12-02 |
| 7.1 | Authenticated User Interface | 2025-10-20 | 2025-11-08 |
| 7.2 | Real-time Status Updates | 2025-11-01 | 2025-11-08 |
| 7.3 | Request Submission Workflow | 2025-11-01 | 2025-11-08 |
| 7.4 | Quote Review & PDF Generation | 2025-11-15 | 2025-11-30 |
| 7.5 | UI/UX Polish & Accessibility | 2025-11-15 | 2025-12-02 |
| 7.6 | Frontend Testing Suite | 2025-11-15 | 2025-12-02 |
| 7.7 | ChatKit Integration Completion | 2025-11-15 | 2025-11-22 |
| 8.0 | PHASE 4 MILESTONE: USER INTERFACE COMPLETE | 2025-12-02 | 2025-12-02 |
| 9.0 | PHASE 5: QUALITY ASSURANCE & OPTIMIZATION | 2025-11-08 | 2025-12-09 |
| 9.1 | Comprehensive Test Coverage | 2025-11-08 | 2025-11-20 |
| 9.2 | Load & Performance Testing | 2025-11-20 | 2025-11-25 |
| 9.3 | API Performance Optimization | 2025-11-25 | 2025-11-28 |
| 9.4 | Database Query Optimization | 2025-11-28 | 2025-11-30 |
| 9.5 | Security Audit & Penetration Testing | 2025-12-01 | 2025-12-05 |
| 9.6 | Bug Fix Sprint | 2025-12-06 | 2025-12-09 |
| 10.0 | PHASE 5 MILESTONE: PRODUCTION-READY QUALITY | 2025-12-09 | 2025-12-09 |
| 11.0 | PHASE 6: PRODUCTION DEPLOYMENT PREP | 2025-12-10 | 2025-12-16 |
| 11.1 | Monitoring & Alerting Setup | 2025-11-01 | 2025-11-08 |
| 11.2 | CI/CD Pipeline Configuration | 2025-11-01 | 2025-11-08 |
| 11.3 | Staging Environment Deployment | 2025-11-08 | 2025-11-15 |
| 11.4 | User Acceptance Testing (UAT) | 2025-11-20 | 2025-11-25 |
| 11.5 | Production Deployment Preparation | 2025-11-25 | 2025-11-30 |
| 11.6 | Pre-Launch Checklist & Validation | 2025-12-01 | 2025-12-16 |
| 11.7 | Redis/BullMQ Infrastructure | 2025-11-15 | 2025-11-20 |
| 11.8 | MCP Credential Management | 2025-11-15 | 2025-11-20 |
| 12.0 | PHASE 6 MILESTONE: READY FOR LAUNCH | 2025-12-16 | 2025-12-16 |
| 13.0 | PHASE 7: PRODUCTION LAUNCH | 2025-12-17 | 2025-12-23 |
| 13.1 | Production Deployment | 2025-12-17 | 2025-12-17 |

| ID | Task | Start | Finish |
| --- | --- | --- | --- |
| 13.2 | Launch Day Monitoring | 2025-12-17 | 2025-12-17 |
| 13.3 | Early User Onboarding | 2025-12-18 | 2025-12-20 |
| 13.4 | Performance Monitoring & Tuning | 2025-12-18 | 2025-12-23 |
| 13.5 | User Feedback Collection | 2025-12-21 | 2025-12-23 |
| 13.6 | Issue Triage & Hot Fixes | 2025-12-17 | 2025-12-23 |
| 14.0 | PROJECT MILESTONE: PRODUCTION LAUNCH COMPLETE | 2025-12-23 | 2025-12-23 |
| 15.0 | POST-LAUNCH SUPPORT & ITERATION | 2025-12-24 | 2025-12-30 |
| 15.1 | Week 1 Performance Review | 2025-12-24 | 2025-12-30 |
| 15.2 | Feature Enhancement Planning | 2025-12-24 | 2025-12-30 |
| 16.0 | PROJECT COMPLETION & HANDOFF | 2025-12-30 | 2025-12-30 |
| BACKLOG.1 | PR Review & Merge Coordination |  |  |
| BACKLOG.2 | TypeScript Error Resolution |  |  |
| BACKLOG.3 | Test Suite Stabilization |  |  |
| BACKLOG.4 | PR #6 Investigation |  |  |
| BACKLOG.5 | Linear Sync & Documentation Update |  |  |

## Version 2 (saved 2025-12-24)

Note of the change: chore: remove discarded iso_agent_id to user_id migration

Last finish stays 2025-12-30.

Removed: 2.7 Database Field Migration (iso_agent_id → user_id)
